# INST706_Project_Step1

How a schedule from MS Project changed from version to version. A marks actual dates.

## Version 1 (saved 2018-11-04)

Note of the change: Leveling v5

| ID | WBS | Task | Duration | Start | Finish | Predecessors | Total float | Constraint |
| --- | --- | --- | --- | --- | --- | --- | --- | --- |
| 1 | 1 | **Overall Project** | 135d | 2018-05-29 08:00 | 2018-12-07 17:00 |  |  |  |
| 2 | 1.1 | **Project Management** | 277.6d? | 2018-06-08 08:00 | 2019-07-12 13:47 |  | 0d |  |
| 3 |  | Manage Project | 137d | 2018-06-13 09:59 | 2019-01-02 09:59 | 125FF | 71.9d |  |
| 4 |  | Establish WBS Estimates | 4d? | 2018-06-13 09:59 | 2019-01-08 08:47 | 3SS | 71.9d | start no earlier than 2018-05-29 08:00 |
| 5 |  | Set Acceptance Criteria for Deliverables | 2d | 2019-01-08 08:47 | 2019-01-10 08:47 | 4 | 71.9d |  |
| 6 |  | Evaluate Risks | 1d? | 2019-01-10 08:47 | 2019-01-11 08:47 | 5 | 71.9d |  |
| 7 |  | Prepare Risk Mitgation Plan | 1d? | 2019-01-11 08:47 | 2019-01-14 08:47 | 6 | 71.9d |  |
| 8 |  | Kickoff Meeting | 0.5d | 2019-04-03 09:36 | 2019-04-03 14:36 | 7 | 71.9d |  |
| 9 | 1.1.7 | **Progress Review Team Meeting** | 126.1d | 2018-06-08 08:00 | 2018-12-07 08:48 |  | 151.5d |  |
| 10 |  | Progress Review Team Meeting 1 | 0.1d | 2018-06-08 08:00 | 2018-06-08 08:48 |  | 277.5d | start no earlier than 2018-06-08 08:00 |
| 11 |  | Progress Review Team Meeting 2 | 0.1d | 2018-06-15 08:00 | 2018-06-15 08:48 |  | 272.5d | start no earlier than 2018-06-15 08:00 |
| 12 |  | Progress Review Team Meeting 3 | 0.1d | 2018-06-22 08:00 | 2018-06-22 08:48 |  | 267.5d | start no earlier than 2018-06-22 08:00 |
| 13 |  | Progress Review Team Meeting 4 | 0.1d | 2018-06-29 08:00 | 2018-06-29 08:48 |  | 262.5d | start no earlier than 2018-06-29 08:00 |
| 14 |  | Progress Review Team Meeting 5 | 0.1d | 2018-07-06 08:00 | 2018-07-06 08:48 |  | 258.5d | start no earlier than 2018-07-06 08:00 |
| 15 |  | Progress Review Team Meeting 6 | 0.1d | 2018-07-13 08:00 | 2018-07-13 08:48 |  | 253.5d | start no earlier than 2018-07-13 08:00 |
| 16 |  | Progress Review Team Meeting 7 | 0.1d | 2018-07-20 08:00 | 2018-07-20 08:48 |  | 248.5d | start no earlier than 2018-07-20 08:00 |
| 17 |  | Progress Review Team Meeting 8 | 0.1d | 2018-07-27 08:00 | 2018-07-27 08:48 |  | 243.5d | start no earlier than 2018-07-27 08:00 |
| 18 |  | Progress Review Team Meeting 9 | 0.1d | 2018-08-03 08:00 | 2018-08-03 08:48 |  | 238.5d | start no earlier than 2018-08-03 08:00 |
| 19 |  | Progress Review Team Meeting 10 | 0.1d | 2018-08-10 08:00 | 2018-08-10 08:48 |  | 233.5d | start no earlier than 2018-08-10 08:00 |
| 20 |  | Progress Review Team Meeting 11 | 0.1d | 2018-08-17 08:00 | 2018-08-17 08:48 |  | 228.5d | start no earlier than 2018-08-17 08:00 |
| 21 |  | Progress Review Team Meeting 12 | 0.1d | 2018-08-24 08:00 | 2018-08-24 08:48 |  | 223.5d | start no earlier than 2018-08-24 08:00 |
| 22 |  | Progress Review Team Meeting 13 | 0.1d | 2018-08-31 08:00 | 2018-08-31 08:48 |  | 218.5d | start no earlier than 2018-08-31 08:00 |
| 23 |  | Progress Review Team Meeting 14 | 0.1d | 2018-09-07 08:00 | 2018-09-07 08:48 |  | 214.5d | start no earlier than 2018-09-07 08:00 |
| 24 |  | Progress Review Team Meeting 15 | 0.1d | 2018-09-14 08:00 | 2018-09-14 08:48 |  | 209.5d | start no earlier than 2018-09-14 08:00 |
| 25 |  | Progress Review Team Meeting 16 | 0.1d | 2018-09-21 08:00 | 2018-09-21 08:48 |  | 204.5d | start no earlier than 2018-09-21 08:00 |
| 26 |  | Progress Review Team Meeting 17 | 0.1d | 2018-09-28 08:00 | 2018-09-28 08:48 |  | 199.5d | start no earlier than 2018-09-28 08:00 |
| 27 |  | Progress Review Team Meeting 18 | 0.1d | 2018-10-05 08:00 | 2018-10-05 08:48 |  | 194.5d | start no earlier than 2018-10-05 08:00 |
| 28 |  | Progress Review Team Meeting 19 | 0.1d | 2018-10-12 08:00 | 2018-10-12 08:48 |  | 189.5d | start no earlier than 2018-10-12 08:00 |
| 29 |  | Progress Review Team Meeting 20 | 0.1d | 2018-10-19 08:00 | 2018-10-19 08:48 |  | 184.5d | start no earlier than 2018-10-19 08:00 |
| 30 |  | Progress Review Team Meeting 21 | 0.1d | 2018-10-26 08:00 | 2018-10-26 08:48 |  | 179.5d | start no earlier than 2018-10-26 08:00 |
| 31 |  | Progress Review Team Meeting 22 | 0.1d | 2018-11-02 08:00 | 2018-11-02 08:48 |  | 174.5d | start no earlier than 2018-11-02 08:00 |
| 32 |  | Progress Review Team Meeting 23 | 0.1d | 2018-11-09 08:00 | 2018-11-09 08:48 |  | 169.5d | start no earlier than 2018-11-09 08:00 |
| 33 |  | Progress Review Team Meeting 24 | 0.1d | 2018-11-16 08:00 | 2018-11-16 08:48 |  | 164.5d | start no earlier than 2018-11-16 08:00 |
| 34 |  | Progress Review Team Meeting 25 | 0.1d | 2018-11-26 08:00 | 2018-11-26 08:48 |  | 160.5d | start no earlier than 2018-11-23 08:00 |
| 35 |  | Progress Review Team Meeting 26 | 0.1d | 2018-11-30 08:00 | 2018-11-30 08:48 |  | 156.5d | start no earlier than 2018-11-30 08:00 |
| 36 |  | Progress Review Team Meeting 27 | 0.1d | 2018-12-07 08:00 | 2018-12-07 08:48 |  | 151.5d | start no earlier than 2018-12-07 08:00 |
| 37 | 1.1.8 | **Update Sponsors** | 146.1d | 2018-07-02 08:00 | 2019-02-01 08:48 |  | 115.5d |  |
| 38 |  | Update Sponsors 1 | 0.1d | 2018-07-02 08:00 | 2018-07-02 08:48 |  | 261.5d | start no earlier than 2018-07-01 08:00 |
| 39 |  | Update Sponsors 2 | 0.1d | 2018-08-01 08:00 | 2018-08-01 08:48 |  | 240.5d | start no earlier than 2018-08-01 08:00 |
| 40 |  | Update Sponsors 3 | 0.1d | 2018-09-04 08:00 | 2018-09-04 08:48 |  | 217.5d | start no earlier than 2018-09-01 08:00 |
| 41 |  | Update Sponsors 4 | 0.1d | 2018-10-01 08:00 | 2018-10-01 08:48 |  | 198.5d | start no earlier than 2018-10-01 08:00 |
| 42 |  | Update Sponsors 5 | 0.1d | 2018-11-01 08:00 | 2018-11-01 08:48 |  | 175.5d | start no earlier than 2018-11-01 08:00 |
| 43 |  | Update Sponsors 6 | 0.1d | 2018-12-03 08:00 | 2018-12-03 08:48 |  | 155.5d | start no earlier than 2018-12-01 08:00 |
| 44 |  | Update Sponsors 7 | 0.1d | 2019-01-02 08:00 | 2019-01-02 08:48 |  | 137.5d | start no earlier than 2019-01-01 08:00 |
| 45 |  | Update Sponsors 8 | 0.1d | 2019-02-01 08:00 | 2019-02-01 08:48 |  | 115.5d | start no earlier than 2019-02-01 08:00 |
| 46 |  | Document project progress | 137d | 2018-12-17 14:59 | 2019-07-12 13:47 | 125FF | 0d |  |
| 47 | 1.2 | **System Requirements** | 13.33d | 2018-05-29 08:00 | 2018-06-15 10:38 |  |  |  |
| 48 |  | Gather Business Requirements | 4d | 2018-05-29 08:00 | 2018-06-01 17:00 |  | -3d |  |
| 49 |  | Design Business Process Flows | 2d | 2018-06-04 08:00 | 2018-06-05 17:00 | 48 | -3d |  |
| 50 |  | Document Business Process Flows | 0.5d | 2018-06-13 08:00 | 2018-06-13 12:00 | 49 | 274.1d |  |
| 51 |  | Finalize Technical Requirements | 6d | 2018-05-29 08:00 | 2018-06-05 17:00 |  | 22.87d |  |
| 52 |  | Create Operational Requirements | 5d | 2018-06-06 08:00 | 2018-06-12 17:00 | 48, 49 | -3d |  |
| 53 |  | Identify Technical Infrastructure Needs | 2d | 2018-06-13 08:00 | 2018-06-14 17:00 | 51, 52 | 17.87d |  |
| 54 |  | Document Requirements | 0.66d | 2018-08-29 08:00 | 2018-09-07 10:38 | 48, 51, 52, 55 | 214.27d |  |
| 55 |  | Acceptance Criteria Buffer | 2d | 2018-08-06 08:00 | 2018-08-28 17:00 | 53 | 214.27d |  |
| 56 | 1.3 | **Software Requirements** | 19.5d | 2018-06-15 08:00 | 2018-07-13 12:00 |  |  |  |
| 57 | 1.3.1 | **Create Functional Requirements** | 19.5d | 2018-06-15 08:00 | 2018-07-13 12:00 | 48, 49, 52 |  |  |
| 58 |  | Capture Customer Profile | 4d | 2018-06-25 08:00 | 2018-06-28 17:00 |  | -2d |  |
| 59 |  | View and Search Product Catalog | 6d | 2018-06-15 08:00 | 2018-06-22 17:00 |  | -5d |  |
| 60 |  | Updating and Calculating Shopping Cart | 3d | 2018-06-29 08:00 | 2018-07-03 17:00 | 59 | -5d |  |
| 61 |  | Taking Payments | 6d | 2018-06-15 08:00 | 2018-06-22 17:00 |  | 2d |  |
| 62 |  | Submit Order | 8d | 2018-07-05 08:00 | 2018-07-16 17:00 | 58, 59, 60, 61 | -5d |  |
| 63 |  | Check Order History & Order Status | 3d | 2018-07-17 08:00 | 2018-07-19 17:00 | 62 | -5d |  |
| 64 |  | Document Functional requirements | 0.5d | 2018-07-20 08:00 | 2018-07-20 12:00 | 58, 59, 60, 61, 62, 63 | -5d |  |
| 65 |  | Create Data Requirements | 3d | 2018-06-29 08:00 | 2018-07-03 17:00 | 58, 59 | 5.5d |  |
| 66 |  | Create ERP Interface Requirements | 7d | 2018-07-05 08:00 | 2018-07-13 17:00 | 62SS | -1.5d |  |
| 67 |  | Create User Interface Requirements | 4d | 2018-06-25 08:00 | 2018-06-28 17:00 | 57SS | 8.5d |  |
| 68 |  | Document Data, ERP Interface and User Interface Requiremnts | 1d | 2018-07-16 08:00 | 2018-07-16 17:00 | 65, 66, 67 | -1.5d |  |
| 69 |  | Procuring Infrastructure | 4d | 2018-06-15 08:00 | 2018-07-06 17:00 |  | 4.5d |  |
| 70 |  | Acceptance Criteria Buffer | 2d | 2018-07-17 08:00 | 2018-07-18 17:00 |  | -3.5d |  |

| ID | WBS | Task | Duration | Start | Finish | Predecessors | Total float |
| --- | --- | --- | --- | --- | --- | --- | --- |
| 71 | 1.4 | **Detailed Design** | 33.7d | 2018-07-13 13:00 | 2018-08-30 09:36 | 56 | 0d |
| 72 |  | Design Capture Customer Profile Pages & Components | 13.5d | 2018-07-13 13:00 | 2018-08-01 17:00 |  | 3d |
| 73 |  | Design View and Search Product Catalog Pages & Components | 12.5d | 2018-07-13 13:00 | 2018-07-31 17:00 |  | 0d |
| 74 |  | Design Updating and Calculating Shopping Cart | 4d | 2018-08-01 08:00 | 2018-08-06 17:00 | 73 | 0d |
| 75 |  | Design Taking Payments Pages & Components | 6d | 2018-07-13 13:00 | 2018-08-06 12:00 |  | 0.5d |
| 76 |  | Design Submit Order Pages & Components | 8d | 2018-08-07 08:00 | 2018-08-16 17:00 | 72, 73, 74, 75 | 7d |
| 77 |  | Design check Order History & Order Status Pages & Components | 2d | 2018-08-17 08:00 | 2018-08-20 17:00 | 76 | 7d |
| 78 |  | Design Logical & Physical Data Model | 15.5d | 2018-07-13 13:00 | 2018-08-03 17:00 |  | 7.87d |
| 79 |  | Design ERP Interface | 17d | 2018-08-07 08:00 | 2018-08-29 17:00 | 72, 73, 74, 75 | 0d |
| 80 |  | Document the design of all modules | 0.2d | 2018-08-30 08:00 | 2018-08-30 09:36 | 72, 73, 74, 75, 76, 77, 78, 79 | 0d |
| 81 |  | Acceptance Criteria Buffer | 2d | 2018-08-21 08:00 | 2018-08-22 17:00 |  | 5.2d |
| 82 | 1.5 | **Test Planning** | 59.37d | 2018-07-13 13:00 | 2018-10-05 15:56 |  | 0d |
| 83 |  | Gather Testing Requirements | 7d | 2018-07-13 13:00 | 2018-07-24 12:00 | 57 | 26.7d |
| 84 |  | Create System Test Plan & Test Cases | 10d | 2018-08-30 09:36 | 2018-09-14 09:36 | 83, 71 | 0d |
| 85 |  | Write System Test Scripts | 14.67d | 2018-09-17 09:36 | 2018-10-05 15:56 | 86 | 0d |
| 86 |  | Acceptance Criteria Buffer | 1d | 2018-09-14 09:36 | 2018-09-17 09:36 | 84 | 0d |
| 87 | 1.6 | **Technical Infrastructure** | 200.7d? | 2018-06-15 08:00 | 2019-04-03 14:36 |  | 17.87d |
| 88 |  | Create Development Environment | 20d | 2018-06-15 08:00 | 2018-07-13 17:00 | 53 | 17.87d |
| 89 |  | Create Testing Environment | 38d | 2018-07-16 08:00 | 2018-09-06 17:00 | 88 | 168d |
| 90 |  | Support Development Environment | 38d | 2018-07-16 08:00 | 2018-09-06 17:00 | 88 | 214.1d |
| 91 |  | Support Testing Environment & Deployment | 46d | 2018-09-07 10:38 | 2018-11-12 10:38 | 89 | 167.77d |
| 92 |  | Support Database | 46d | 2018-09-24 08:00 | 2018-11-28 17:00 | 108 | 72d |
| 93 |  | Security and Maintenance: Add web application and real-time backups | 7d | 2018-11-29 08:00 | 2018-12-07 17:00 | 92 | 72d |
| 94 |  | Security and Maintenance: Data Loss Prevention Infrastructure | 6d | 2018-12-10 08:00 | 2018-12-17 17:00 | 93 | 72d |
| 95 |  | Security and Maintenance: Setup Authentication | 6d | 2018-12-18 08:00 | 2018-12-27 17:00 | 94 | 72d |
| 96 |  | Security and Maintenance: Threat Intelligence | 6d | 2018-12-28 08:00 | 2019-01-08 17:00 | 95 | 72d |
| 97 |  | Security and Maintenance: Identity and Access Management | 6d | 2019-01-09 08:00 | 2019-01-16 17:00 | 96 | 72d |
| 98 |  | Document Technical infrastructure details | 0.5d | 2019-04-03 09:36 | 2019-04-03 14:36 | 88, 89, 90, 91, 99 | 71.9d |
| 99 |  | Acceptance Criteria Buffer | 1d? | 2019-04-02 09:36 | 2019-04-03 09:36 | 97 | 71.9d |
| 100 | 1.7 | **Development & Unit Test** | 94.2d | 2018-08-02 08:00 | 2018-12-17 09:36 | 88 | 4.87d |
| 101 |  | Train developers | 5d | 2018-08-02 08:00 | 2018-08-08 17:00 | 72 | 4.87d |
| 102 |  | Build Capture Customer Profile Pages & Components | 13d | 2018-08-09 08:00 | 2018-08-27 17:00 | 72, 101 | 10.87d |
| 103 |  | Build View and Search Product Catalog Pages & Components | 12d | 2018-08-09 08:00 | 2018-08-24 17:00 | 73, 101 | 4.87d |
| 104 |  | Build Updating and Calculating Shopping Cart | 7d | 2018-08-27 08:00 | 2018-09-05 17:00 | 74, 103, 101 | 4.87d |
| 105 |  | Build Taking Payments Pages & Components | 6d | 2018-08-28 08:00 | 2018-09-05 17:00 | 75, 101 | 4.87d |
| 106 |  | Build Submit Order Pages & Components | 12d | 2018-09-06 08:00 | 2018-09-21 17:00 | 76, 102, 103, 104, 105, 101 | 4.87d |
| 107 |  | Build Check Order History & Order Status Pages & Components | 6d | 2018-08-21 08:00 | 2018-08-28 17:00 | 77, 101 | 21.87d |
| 108 |  | Build Logical & Physical Data Model | 31d | 2018-08-09 08:00 | 2018-09-21 17:00 | 78, 101 | 4.87d |
| 109 |  | Build ERP Interface | 18d | 2018-08-30 09:36 | 2018-09-26 09:36 | 79, 101 | 2.67d |
| 110 |  | Support Development & Assembly Test | 23d | 2018-08-30 09:36 | 2018-10-03 09:36 | 71, 101 | 145.4d |
| 111 |  | Security and Manintenance Unit Testing | 26.2d | 2018-10-03 09:36 | 2018-12-17 09:36 | 110 | 145.4d |
| 112 |  | Document development work and best practices | 0.58d | 2018-09-26 09:36 | 2018-10-03 11:55 | 102, 103, 104, 105, 106, 107, 108, 109 | 196.11d |
| 113 | 1.8 | **Testing** | 55.2d | 2018-09-06 08:00 | 2018-11-26 09:34 |  | 0d |
| 114 | 1.8.1 | **Perform Assembly Testing** | 19.2d | 2018-09-06 08:00 | 2018-10-03 09:36 | 83 | 2.67d |
| 115 |  | Perform Phase 1 Testing | 12d | 2018-09-06 08:00 | 2018-09-21 17:00 | 102, 103, 104 | 4.87d |
| 116 |  | Perform Phase 2 Testing | 5d | 2018-09-26 09:36 | 2018-10-03 09:36 | 105, 106, 107, 115, 108, 109 | 2.67d |
| 117 |  | Perform System Testing | 16.87d | 2018-10-05 15:56 | 2018-10-30 15:56 | 114, 84, 85 | 0d |
| 118 |  | Perform Validation Testing | 8d | 2018-10-30 15:56 | 2018-11-09 15:56 | 117 | 0d |
| 119 |  | Security and Maintenance Testing | 8d | 2018-11-09 15:56 | 2018-11-21 15:56 | 118 | 0d |
| 120 |  | Document tests and test results | 0.33d | 2018-11-21 15:56 | 2018-11-26 09:34 | 114, 117, 119 | 0d |
| 121 | 1.9 | **Deployment** | 23.05d | 2018-11-26 09:34 | 2019-01-02 09:59 | 113 | 0d |
| 122 |  | Implement System | 10d | 2018-11-26 09:34 | 2018-12-10 09:34 |  | 0d |
| 123 |  | Deploy To Production | 1d | 2018-12-10 09:34 | 2018-12-11 09:34 | 122 | 0d |
| 124 |  | Acceptance Criteria Buffer | 1d | 2018-12-11 09:34 | 2018-12-12 09:34 | 123 | 0d |
| 125 |  | Project Wrap up | 11.05d | 2018-12-12 09:34 | 2019-01-02 09:59 | 124 | 0d |
| 126 | 1.10 | **Post-Installation Maintenance and Support** | 83.3d | 2018-12-11 09:34 | 2019-04-11 12:00 | 123 | 46.8d |
| 127 |  | Maintenance Post-Installation | 76d | 2018-12-11 09:34 | 2019-04-02 09:36 |  | 46.8d |
| 128 |  | Support Post-Installation | 60d | 2019-01-17 08:00 | 2019-04-11 12:00 | 127FF | 66.1d |

## Version 2 (saved 2018-11-04)

Note of the change: This is my latest version - Divya

Last finish 2019-07-12 → 2019-03-18 (-116d).

Added:

| ID | Task | Duration | Start | Finish |
| --- | --- | --- | --- | --- |
| 4 | **Manage Communication** | 162.1d | 2018-06-08 08:00 | 2019-02-01 08:48 |

Changed:

| ID | Task | Start | Finish | Duration | Total float | Predecessors | Other |
| --- | --- | --- | --- | --- | --- | --- | --- |
| 1 | **Overall Project** |  | 2018-12-07 17:00 → 2019-03-18 17:00 (+101d) | 135d → 202d |  |  |  |
| 2 | **Project Management** | 2018-06-08 08:00 → 2018-05-30 08:00 (-9d) | 2019-07-12 13:47 → 2019-02-18 17:00 (-144d) | 277.6d? → 181d | 0d → none |  |  |
| 3 | **Manage Project** | 2018-06-13 09:59 → 2018-06-08 08:00 (-5d) | 2019-01-02 09:59 → 2019-02-01 08:48 (+30d) | 137d → 162.1d | 71.9d → 0d | 126FF → none |  |
| 6 | Progress Review Team Meeting 1 |  |  |  | 277.5d → 193.9d |  | resources Chris Johnson (Project Manager) → none |
| 7 | Progress Review Team Meeting 2 |  |  |  | 272.5d → 188.9d |  | resources Chris Johnson (Project Manager) → none |
| 8 | Progress Review Team Meeting 3 |  |  |  | 267.5d → 183.9d |  | resources Chris Johnson (Project Manager) → none |
| 9 | Progress Review Team Meeting 4 |  |  |  | 262.5d → 178.9d |  | resources Chris Johnson (Project Manager) → none |
| 10 | Progress Review Team Meeting 5 |  |  |  | 258.5d → 174.9d |  | resources Chris Johnson (Project Manager) → none |
| 11 | Progress Review Team Meeting 6 |  |  |  | 253.5d → 169.9d |  | resources Chris Johnson (Project Manager) → none |
| 12 | Progress Review Team Meeting 7 |  |  |  | 248.5d → 164.9d |  | resources Chris Johnson (Project Manager) → none |
| 13 | Progress Review Team Meeting 8 |  |  |  | 243.5d → 159.9d |  | resources Chris Johnson (Project Manager) → none |
| 14 | Progress Review Team Meeting 9 |  |  |  | 238.5d → 154.9d |  | resources Chris Johnson (Project Manager) → none |
| 15 | Progress Review Team Meeting 10 |  |  |  | 233.5d → 149.9d |  | resources Chris Johnson (Project Manager) → none |
| 16 | Progress Review Team Meeting 11 |  |  |  | 228.5d → 144.9d |  | resources Chris Johnson (Project Manager) → none |
| 17 | Progress Review Team Meeting 12 |  |  |  | 223.5d → 139.9d |  | resources Chris Johnson (Project Manager) → none |
| 18 | Progress Review Team Meeting 13 |  |  |  | 218.5d → 134.9d |  | resources Chris Johnson (Project Manager) → none |
| 19 | Progress Review Team Meeting 14 |  |  |  | 214.5d → 130.9d |  | resources Chris Johnson (Project Manager) → none |
| 20 | Progress Review Team Meeting 15 |  |  |  | 209.5d → 125.9d |  | resources Chris Johnson (Project Manager) → none |
| 21 | Progress Review Team Meeting 16 |  |  |  | 204.5d → 120.9d |  | resources Chris Johnson (Project Manager) → none |
| 22 | Progress Review Team Meeting 17 |  |  |  | 199.5d → 115.9d |  | resources Chris Johnson (Project Manager) → none |
| 23 | Progress Review Team Meeting 18 |  |  |  | 194.5d → 110.9d |  | resources Chris Johnson (Project Manager) → none |
| 24 | Progress Review Team Meeting 19 |  |  |  | 189.5d → 105.9d |  | resources Chris Johnson (Project Manager) → none |
| 25 | Progress Review Team Meeting 20 |  |  |  | 184.5d → 100.9d |  | resources Chris Johnson (Project Manager) → none |
| 26 | Progress Review Team Meeting 21 |  |  |  | 179.5d → 95.9d |  | resources Chris Johnson (Project Manager) → none |
| 27 | Progress Review Team Meeting 22 |  |  |  | 174.5d → 90.9d |  | resources Chris Johnson (Project Manager) → none |
| 28 | Progress Review Team Meeting 23 |  |  |  | 169.5d → 85.9d |  | resources Chris Johnson (Project Manager) → none |
| 29 | Progress Review Team Meeting 24 |  |  |  | 164.5d → 80.9d |  | resources Chris Johnson (Project Manager) → none |
| 30 | Progress Review Team Meeting 25 |  |  |  | 160.5d → 76.9d |  | resources Chris Johnson (Project Manager) → none |
| 31 | Progress Review Team Meeting 26 |  |  |  | 156.5d → 72.9d |  | resources Chris Johnson (Project Manager) → none |
| 32 | Progress Review Team Meeting 27 |  |  |  | 151.5d → 67.9d |  | resources Chris Johnson (Project Manager) → none |
| 34 | Update Sponsors 1 |  |  |  | 261.5d → 177.9d |  | resources Chris Johnson (Project Manager) → none |
| 35 | Update Sponsors 2 |  |  |  | 240.5d → 156.9d |  | resources Chris Johnson (Project Manager) → none |
| 36 | Update Sponsors 3 |  |  |  | 217.5d → 133.9d |  | resources Chris Johnson (Project Manager) → none |
| 37 | Update Sponsors 4 |  |  |  | 198.5d → 114.9d |  | resources Chris Johnson (Project Manager) → none |
| 38 | Update Sponsors 5 |  |  |  | 175.5d → 91.9d |  | resources Chris Johnson (Project Manager) → none |
| 39 | Update Sponsors 6 |  |  |  | 155.5d → 71.9d |  | resources Chris Johnson (Project Manager) → none |
| 40 | Update Sponsors 7 |  |  |  | 137.5d → 53.9d |  | resources Chris Johnson (Project Manager) → none |
| 41 | Update Sponsors 8 |  |  |  | 115.5d → 31.9d |  | resources Chris Johnson (Project Manager) → none |
| 42 | Establish WBS Estimates | 2018-06-13 09:59 → 2018-06-01 14:59 (-12d) | 2019-01-08 08:47 → 2018-06-01 17:00 (-221d) | 4d? → 0.25d? | 71.9d → 176d | 3SS → none | constraint start no earlier than 2018-05-29 08:00 → finish no earlier than 2018-06-01 17:00 |
| 43 | Set Acceptance Criteria for Deliverables | 2019-01-08 08:47 → 2018-06-04 08:00 (-218d) | 2019-01-10 08:47 → 2018-06-05 17:00 (-219d) |  | 71.9d → 176d |  | constraint none → start no earlier than 2018-06-04 08:00 |
| 44 | Evaluate Risks | 2019-01-10 08:47 → 2018-06-04 08:00 (-220d) | 2019-01-11 08:47 → 2018-06-04 17:00 (-221d) |  | 71.9d → 195.5d | 43 → 42SS, 43 | constraint none → start no earlier than 2018-06-04 08:00 |
| 45 | Prepare Risk Mitgation Plan | 2019-01-11 08:47 → 2018-06-05 08:00 (-220d) | 2019-01-14 08:47 → 2018-06-05 17:00 (-223d) |  | 71.9d → 195.5d |  |  |
| 46 | Kickoff Meeting | 2019-04-03 09:36 → 2018-06-06 08:00 (-301d) | 2019-04-03 14:36 → 2018-06-06 12:00 (-301d) |  | 71.9d → 195.5d |  | constraint none → start no earlier than 2018-06-06 08:00 |
| 47 | Document project progress | 2018-12-17 14:59 → 2018-06-08 15:47 (-192d) | 2019-07-12 13:47 → 2019-02-18 17:00 (-144d) | 137d → 173.15d | 0d → 20d | 126FF → none | constraint none → finish no earlier than 2019-02-18 17:00 |
| 48 | **System Requirements** |  | 2018-06-15 10:38 → 2018-09-07 17:00 (+84d) | 13.33d → 72d |  |  |  |
| 55 | Document Requirements | 2018-08-29 08:00 → 2018-07-19 08:00 (-41d) |  | 0.66d → 0.99d | 214.27d → 112.67d |  |  |
| 56 | Acceptance Criteria Buffer | 2018-08-06 08:00 → 2018-07-17 08:00 (-20d) | 2018-08-28 17:00 → 2018-07-18 17:00 (-41d) |  | 214.27d → 112.67d |  |  |
| 57 | **Software Requirements** |  | 2018-07-13 12:00 → 2018-07-20 17:00 (+7d) | 19.5d → 25d |  |  |  |
| 58 | **Create Functional Requirements** |  | 2018-07-13 12:00 → 2018-07-20 17:00 (+7d) | 19.5d → 25d |  |  |  |
| 72 | **Detailed Design** | 2018-07-13 13:00 → 2018-07-23 08:00 (+10d) | 2018-08-30 09:36 → 2018-09-04 09:36 (+5d) | 33.7d → 30.2d | 0d → 2.8d |  |  |
| 73 | Design Capture Customer Profile Pages & Components | 2018-07-13 13:00 → 2018-07-23 08:00 (+10d) | 2018-08-01 17:00 → 2018-08-02 17:00 (+1d) | 13.5d → 9d | 3d → 5.8d |  |  |
| 74 | Design View and Search Product Catalog Pages & Components | 2018-07-13 13:00 → 2018-07-23 08:00 (+10d) | 2018-07-31 17:00 → 2018-08-02 17:00 (+2d) | 12.5d → 9d | 0d → 2.8d |  |  |
| 75 | Design Updating and Calculating Shopping Cart | 2018-08-01 08:00 → 2018-08-03 08:00 (+2d) | 2018-08-06 17:00 → 2018-08-07 17:00 (+1d) | 4d → 3d | 0d → 2.8d |  |  |
| 76 | Design Taking Payments Pages & Components | 2018-07-13 13:00 → 2018-07-23 08:00 (+10d) | 2018-08-06 12:00 → 2018-08-07 17:00 (+1d) |  | 0.5d → 2.8d |  |  |
| 77 | Design Submit Order Pages & Components | 2018-08-07 08:00 → 2018-08-08 08:00 (+1d) | 2018-08-16 17:00 → 2018-08-17 17:00 (+1d) |  | 7d → 10.8d |  |  |
| 78 | Design check Order History & Order Status Pages & Components | 2018-08-17 08:00 → 2018-08-20 08:00 (+3d) | 2018-08-20 17:00 → 2018-08-21 17:00 (+1d) |  | 7d → 10.8d |  |  |
| 79 | Design Logical & Physical Data Model | 2018-07-13 13:00 → 2018-07-23 08:00 (+10d) | 2018-08-03 17:00 → 2018-08-07 17:00 (+4d) | 15.5d → 12d | 7.87d → 10.67d |  |  |
| 80 | Design ERP Interface | 2018-08-07 08:00 → 2018-08-08 08:00 (+1d) | 2018-08-29 17:00 → 2018-08-31 17:00 (+2d) | 17d → 18d | 0d → 2.8d |  |  |
| 81 | Document the design of all modules | 2018-08-30 08:00 → 2018-09-04 08:00 (+5d) | 2018-08-30 09:36 → 2018-09-04 09:36 (+5d) |  | 0d → 2.8d |  |  |
| 82 | Acceptance Criteria Buffer | 2018-08-21 08:00 → 2018-08-22 08:00 (+1d) | 2018-08-22 17:00 → 2018-08-23 17:00 (+1d) |  | 5.2d → 9d |  |  |
| 83 | **Test Planning** | 2018-07-13 13:00 → 2018-07-23 08:00 (+10d) | 2018-10-05 15:56 → 2018-10-09 15:56 (+4d) | 59.37d → 55.87d | 0d → 2.8d |  |  |
| 84 | Gather Testing Requirements | 2018-07-13 13:00 → 2018-07-23 08:00 (+10d) | 2018-07-24 12:00 → 2018-07-31 17:00 (+7d) |  | 26.7d → 26d |  |  |
| 85 | Create System Test Plan & Test Cases | 2018-08-30 09:36 → 2018-09-04 09:36 (+5d) | 2018-09-14 09:36 → 2018-09-18 09:36 (+4d) |  | 0d → 2.8d |  |  |
| 86 | Write System Test Scripts | 2018-09-17 09:36 → 2018-09-19 09:36 (+2d) | 2018-10-05 15:56 → 2018-10-09 15:56 (+4d) |  | 0d → 2.8d |  |  |
| 87 | Acceptance Criteria Buffer | 2018-09-14 09:36 → 2018-09-18 09:36 (+4d) | 2018-09-17 09:36 → 2018-09-19 09:36 (+2d) |  | 0d → 2.8d |  |  |
| 88 | **Technical Infrastructure** |  | 2019-04-03 14:36 → 2018-11-30 17:00 (-124d) | 200.7d? → 117d | 17.87d → none |  |  |
| 93 | Support Database | 2018-09-24 08:00 → 2018-09-26 08:00 (+2d) | 2018-11-28 17:00 → 2018-11-30 17:00 (+2d) |  | 72d → 54d |  |  |
| 94 | Security and Maintenance: Add web application and real-time backups | 2018-11-29 08:00 → 2018-09-07 08:00 (-83d) | 2018-12-07 17:00 → 2018-09-26 17:00 (-72d) | 7d → 14d | 72d → 90.5d | 93 → 90 | resources ERP Expert 1 → ERP Expert 1 [50%] |
| 95 | Security and Maintenance: Data Loss Prevention Infrastructure | 2018-12-10 08:00 → 2018-09-27 08:00 (-74d) | 2018-12-17 17:00 → 2018-10-04 17:00 (-74d) |  | 72d → 90.5d |  | resources ERP Expert 2 → ERP Expert 2 [50%] |
| 96 | Security and Maintenance: Setup Authentication | 2018-12-18 08:00 → 2018-10-05 08:00 (-74d) | 2018-12-27 17:00 → 2018-10-12 17:00 (-76d) |  | 72d → 90.5d |  | resources ERP Expert 1 → ERP Expert 1 [50%] |

| ID | Task | Start | Finish | Duration | Total float | Other |
| --- | --- | --- | --- | --- | --- | --- |
| 97 | Security and Maintenance: Threat Intelligence | 2018-12-28 08:00 → 2018-10-15 08:00 (-74d) | 2019-01-08 17:00 → 2018-10-22 17:00 (-78d) |  | 72d → 90.5d | resources ERP Expert 1 → ERP Expert 1 [50%] |
| 98 | Security and Maintenance: Identity and Access Management | 2019-01-09 08:00 → 2018-10-23 08:00 (-78d) | 2019-01-16 17:00 → 2018-10-31 17:00 (-77d) | 6d → 7d | 72d → 90.5d | resources ERP Expert 2 → ERP Expert 2 [50%] |
| 99 | Document Technical infrastructure details | 2019-04-03 09:36 → 2018-11-12 10:38 (-142d) | 2019-04-03 14:36 → 2018-11-12 15:38 (-142d) |  | 71.9d → 66.17d | constraint none → start no earlier than 2018-10-23 08:00 |
| 100 | Acceptance Criteria Buffer | 2019-04-02 09:36 → 2018-11-01 08:00 (-152d) | 2019-04-03 09:36 → 2018-11-01 17:00 (-153d) |  | 71.9d → 90.5d | constraint none → start no earlier than 2018-10-22 08:00 |
| 101 | **Development & Unit Test** | 2018-08-02 08:00 → 2018-08-03 08:00 (+1d) | 2018-12-17 09:36 → 2018-12-19 09:36 (+2d) | 94.2d → 95.2d | 4.87d → 7.67d |  |
| 102 | Train developers | 2018-08-02 08:00 → 2018-08-03 08:00 (+1d) | 2018-08-08 17:00 → 2018-08-10 17:00 (+2d) | 5d → 6d | 4.87d → 7.67d |  |
| 103 | Build Capture Customer Profile Pages & Components | 2018-08-09 08:00 → 2018-08-13 08:00 (+4d) | 2018-08-27 17:00 → 2018-08-29 17:00 (+2d) |  | 10.87d → 13.67d |  |
| 104 | Build View and Search Product Catalog Pages & Components | 2018-08-09 08:00 → 2018-08-13 08:00 (+4d) | 2018-08-24 17:00 → 2018-08-28 17:00 (+4d) |  | 4.87d → 7.67d |  |
| 105 | Build Updating and Calculating Shopping Cart | 2018-08-27 08:00 → 2018-08-29 08:00 (+2d) | 2018-09-05 17:00 → 2018-09-07 17:00 (+2d) |  | 4.87d → 7.67d |  |
| 106 | Build Taking Payments Pages & Components | 2018-08-28 08:00 → 2018-08-30 08:00 (+2d) | 2018-09-05 17:00 → 2018-09-07 17:00 (+2d) |  | 4.87d → 7.67d |  |
| 107 | Build Submit Order Pages & Components | 2018-09-06 08:00 → 2018-09-10 08:00 (+4d) | 2018-09-21 17:00 → 2018-09-25 17:00 (+4d) |  | 4.87d → 7.67d |  |
| 108 | Build Check Order History & Order Status Pages & Components | 2018-08-21 08:00 → 2018-08-22 08:00 (+1d) | 2018-08-28 17:00 → 2018-08-29 17:00 (+1d) |  | 21.87d → 25.67d |  |
| 109 | Build Logical & Physical Data Model | 2018-08-09 08:00 → 2018-08-13 08:00 (+4d) | 2018-09-21 17:00 → 2018-09-25 17:00 (+4d) |  | 4.87d → 7.67d |  |
| 110 | Build ERP Interface | 2018-08-30 09:36 → 2018-09-04 09:36 (+5d) | 2018-09-26 09:36 → 2018-09-28 09:36 (+2d) |  | 2.67d → 5.47d |  |
| 111 | Support Development & Assembly Test | 2018-08-30 09:36 → 2018-09-04 09:36 (+5d) | 2018-10-03 09:36 → 2018-10-05 09:36 (+2d) |  | 145.4d → 41.8d |  |
| 112 | Security and Manintenance Unit Testing | 2018-10-03 09:36 → 2018-10-05 09:36 (+2d) | 2018-12-17 09:36 → 2018-12-19 09:36 (+2d) |  | 145.4d → 41.8d |  |
| 113 | Document development work and best practices | 2018-09-26 09:36 → 2018-09-28 09:36 (+2d) | 2018-10-03 11:55 → 2018-10-05 11:55 (+2d) |  | 196.11d → 92.51d |  |
| 114 | **Testing** | 2018-09-06 08:00 → 2018-09-10 08:00 (+4d) | 2018-11-26 09:34 → 2018-11-28 09:34 (+2d) |  | 0d → 2.8d |  |
| 115 | **Perform Assembly Testing** | 2018-09-06 08:00 → 2018-09-10 08:00 (+4d) | 2018-10-03 09:36 → 2018-10-05 09:36 (+2d) |  | 2.67d → 5.47d |  |
| 116 | Perform Phase 1 Testing | 2018-09-06 08:00 → 2018-09-10 08:00 (+4d) | 2018-09-21 17:00 → 2018-09-25 17:00 (+4d) |  | 4.87d → 7.67d |  |
| 117 | Perform Phase 2 Testing | 2018-09-26 09:36 → 2018-09-28 09:36 (+2d) | 2018-10-03 09:36 → 2018-10-05 09:36 (+2d) |  | 2.67d → 5.47d |  |
| 118 | Perform System Testing | 2018-10-05 15:56 → 2018-10-09 15:56 (+4d) | 2018-10-30 15:56 → 2018-11-01 15:56 (+2d) | 16.87d → 17d | 0d → 2.8d |  |
| 119 | Perform Validation Testing | 2018-10-30 15:56 → 2018-11-01 15:56 (+2d) | 2018-11-09 15:56 → 2018-11-13 15:56 (+4d) |  | 0d → 2.8d |  |
| 120 | Security and Maintenance Testing | 2018-11-09 15:56 → 2018-11-13 15:56 (+4d) | 2018-11-21 15:56 → 2018-11-27 15:56 (+6d) |  | 0d → 2.8d |  |
| 121 | Document tests and test results | 2018-11-21 15:56 → 2018-11-27 15:56 (+6d) | 2018-11-26 09:34 → 2018-11-28 09:34 (+2d) |  | 0d → 2.8d |  |
| 122 | **Deployment** | 2018-11-26 09:34 → 2018-11-28 09:34 (+2d) | 2019-01-02 09:59 → 2019-01-04 09:59 (+2d) |  | 0d → 2.8d |  |
| 123 | Implement System | 2018-11-26 09:34 → 2018-11-28 09:34 (+2d) | 2018-12-10 09:34 → 2018-12-12 09:34 (+2d) |  | 0d → 2.8d |  |
| 124 | Deploy To Production | 2018-12-10 09:34 → 2018-12-12 09:34 (+2d) | 2018-12-11 09:34 → 2018-12-13 09:34 (+2d) |  | 0d → 2.8d |  |
| 125 | Acceptance Criteria Buffer | 2018-12-11 09:34 → 2018-12-13 09:34 (+2d) | 2018-12-12 09:34 → 2018-12-14 09:34 (+2d) |  | 0d → 51.75d |  |
| 126 | Project Wrap up | 2018-12-12 09:34 → 2018-12-14 09:34 (+2d) | 2019-01-02 09:59 → 2019-01-04 09:59 (+2d) |  | 0d → 51.75d |  |
| 127 | **Post-Installation Maintenance and Support** | 2018-12-11 09:34 → 2018-12-18 08:00 (+7d) | 2019-04-11 12:00 → 2019-03-18 17:00 (-24d) | 83.3d → 61d | 46.8d → none |  |
| 128 | Maintenance Post-Installation | 2018-12-11 09:34 → 2018-12-18 08:00 (+7d) | 2019-04-02 09:36 → 2019-03-18 17:00 (-15d) | 76d → 61d | 46.8d → 0d | constraint none → finish no earlier than 2019-03-18 17:00; resources Sanjay Vohra (DBA); ERP Expert 1 → Sanjay Vohra (DBA) [50%]; ERP Expert 1 [50%] |
| 129 | Support Post-Installation | 2019-01-17 08:00 → 2018-12-18 08:00 (-30d) | 2019-04-11 12:00 → 2019-03-18 17:00 (-24d) | 60d → 61d | 66.1d → 0d | constraint none → start no earlier than 2018-12-18 08:00; resources ERP Expert 2; Developer 5 → ERP Expert 2 [50%]; Developer 5 [50%] |

## Version 3 (saved 2018-11-04)

Note of the change: Only 2 over allocations left!

Last finish stays 2019-03-18.

Changed:

| ID | Task | Start | Finish | Duration | Total float | Other |
| --- | --- | --- | --- | --- | --- | --- |
| 3 | **Manage Project** |  |  |  |  | resources Chris Johnson (Project Manager) [90%] → Chris Johnson (Project Manager) [50%] |
| 6 | Progress Review Team Meeting 1 |  |  |  |  | resources none → Chris Johnson (Project Manager) |
| 7 | Progress Review Team Meeting 2 |  |  |  |  | resources none → Chris Johnson (Project Manager) |
| 8 | Progress Review Team Meeting 3 |  |  |  |  | resources none → Chris Johnson (Project Manager) |
| 9 | Progress Review Team Meeting 4 |  |  |  |  | resources none → Chris Johnson (Project Manager) |
| 10 | Progress Review Team Meeting 5 |  |  |  |  | resources none → Chris Johnson (Project Manager) |
| 11 | Progress Review Team Meeting 6 |  |  |  |  | resources none → Chris Johnson (Project Manager) |
| 12 | Progress Review Team Meeting 7 |  |  |  |  | resources none → Chris Johnson (Project Manager) |
| 13 | Progress Review Team Meeting 8 |  |  |  |  | resources none → Chris Johnson (Project Manager) |
| 14 | Progress Review Team Meeting 9 |  |  |  |  | resources none → Chris Johnson (Project Manager) |
| 15 | Progress Review Team Meeting 10 |  |  |  |  | resources none → Chris Johnson (Project Manager) |
| 16 | Progress Review Team Meeting 11 |  |  |  |  | resources none → Chris Johnson (Project Manager) |
| 17 | Progress Review Team Meeting 12 |  |  |  |  | resources none → Chris Johnson (Project Manager) |
| 18 | Progress Review Team Meeting 13 |  |  |  |  | resources none → Chris Johnson (Project Manager) |
| 19 | Progress Review Team Meeting 14 |  |  |  |  | resources none → Chris Johnson (Project Manager) |
| 20 | Progress Review Team Meeting 15 |  |  |  |  | resources none → Chris Johnson (Project Manager) |
| 21 | Progress Review Team Meeting 16 |  |  |  |  | resources none → Chris Johnson (Project Manager) |
| 22 | Progress Review Team Meeting 17 |  |  |  |  | resources none → Chris Johnson (Project Manager) |
| 23 | Progress Review Team Meeting 18 |  |  |  |  | resources none → Chris Johnson (Project Manager) |
| 24 | Progress Review Team Meeting 19 |  |  |  |  | resources none → Chris Johnson (Project Manager) |
| 25 | Progress Review Team Meeting 20 |  |  |  |  | resources none → Chris Johnson (Project Manager) |
| 26 | Progress Review Team Meeting 21 |  |  |  |  | resources none → Chris Johnson (Project Manager) |
| 27 | Progress Review Team Meeting 22 |  |  |  |  | resources none → Chris Johnson (Project Manager) |
| 28 | Progress Review Team Meeting 23 |  |  |  |  | resources none → Chris Johnson (Project Manager) |
| 29 | Progress Review Team Meeting 24 |  |  |  |  | resources none → Chris Johnson (Project Manager) |
| 30 | Progress Review Team Meeting 25 |  |  |  |  | resources none → Chris Johnson (Project Manager) |
| 31 | Progress Review Team Meeting 26 |  |  |  |  | resources none → Chris Johnson (Project Manager) |
| 32 | Progress Review Team Meeting 27 |  |  |  |  | resources none → Chris Johnson (Project Manager) |
| 34 | Update Sponsors 1 |  |  |  |  | resources none → Chris Johnson (Project Manager) |
| 35 | Update Sponsors 2 |  |  |  |  | resources none → Chris Johnson (Project Manager) |
| 36 | Update Sponsors 3 |  |  |  |  | resources none → Chris Johnson (Project Manager) |
| 37 | Update Sponsors 4 |  |  |  |  | resources none → Chris Johnson (Project Manager) |
| 38 | Update Sponsors 5 |  |  |  |  | resources none → Chris Johnson (Project Manager) |
| 39 | Update Sponsors 6 |  |  |  |  | resources none → Chris Johnson (Project Manager) |
| 40 | Update Sponsors 7 |  |  |  |  | resources none → Chris Johnson (Project Manager) |
| 41 | Update Sponsors 8 |  |  |  |  | resources none → Chris Johnson (Project Manager) |
| 44 | Evaluate Risks | 2018-06-04 08:00 → 2018-06-06 08:00 (+2d) | 2018-06-04 17:00 → 2018-06-06 17:00 (+2d) |  | 195.5d → 193.5d |  |
| 45 | Prepare Risk Mitgation Plan | 2018-06-05 08:00 → 2018-06-07 08:00 (+2d) | 2018-06-05 17:00 → 2018-06-07 17:00 (+2d) |  | 195.5d → 193.5d |  |
| 46 | Kickoff Meeting | 2018-06-06 08:00 → 2018-06-08 08:00 (+2d) | 2018-06-06 12:00 → 2018-06-08 12:00 (+2d) |  | 195.5d → 193.5d |  |
| 47 | Document project progress | 2018-06-08 15:47 → 2018-06-11 08:00 (+3d) |  | 173.15d → 173d |  | constraint finish no earlier than 2019-02-18 17:00 → start no earlier than 2018-06-11 08:00 |
| 100 | Acceptance Criteria Buffer |  |  |  |  | resources ERP Expert 1 → ERP Expert 2 [50%]; Sanjay Vohra (DBA) [50%] |
| 101 | **Development & Unit Test** |  | 2018-12-19 09:36 → 2018-11-30 14:24 (-19d) | 95.2d → 82.68d | 7.67d → 6.04d |  |
| 112 | Security and Manintenance Unit Testing |  | 2018-12-19 09:36 → 2018-11-30 14:24 (-19d) | 26.2d → 38.48d | 41.8d → 72.32d | resources ERP Expert 1; ERP Expert 2 → ERP Expert 1 [25%]; Developer 4; Developer 5 |
| 114 | **Testing** |  | 2018-11-28 09:34 → 2018-11-29 15:36 (+1d) | 55.2d → 56.83d | 2.8d → 1.17d |  |
| 118 | Perform System Testing |  | 2018-11-01 15:56 → 2018-11-05 11:58 (+4d) | 17d → 18.63d | 2.8d → 1.17d | resources Developer 1 (TBD); Developer 2 (TBD); Developer 3 (TBD); Kara Siposki (Test Lead); Marc Sanders (Development Lead); Ryan Neff (Functional Lead); Stacy Lyle (Functional Analyst); Todd Eliason (Tester); ERP Expert 1; ERP Expert 2 → Kara Siposki (Test Lead); Marc Sanders (Development Lead); Ryan Neff (Functional Lead) [25%]; Stacy Lyle (Functional Analyst) [25%]; Todd Eliason (Tester); ERP Expert 1 [50%]; ERP Expert 2 [50%]; Developer 1 (TBD); Developer 2 (TBD) |
| 119 | Perform Validation Testing | 2018-11-01 15:56 → 2018-11-05 11:58 (+4d) | 2018-11-13 15:56 → 2018-11-15 11:58 (+2d) |  | 2.8d → 1.17d |  |
| 120 | Security and Maintenance Testing | 2018-11-13 15:56 → 2018-11-15 11:58 (+2d) | 2018-11-27 15:56 → 2018-11-29 11:58 (+2d) |  | 2.8d → 1.17d |  |
| 121 | Document tests and test results | 2018-11-27 15:56 → 2018-11-29 11:58 (+2d) | 2018-11-28 09:34 → 2018-11-29 15:36 (+1d) |  | 2.8d → 1.17d |  |
| 122 | **Deployment** | 2018-11-28 09:34 → 2018-11-29 15:36 (+1d) | 2019-01-04 09:59 → 2019-01-07 16:02 (+3d) |  | 2.8d → 1.17d |  |
| 123 | Implement System | 2018-11-28 09:34 → 2018-11-29 15:36 (+1d) | 2018-12-12 09:34 → 2018-12-13 15:36 (+1d) |  | 2.8d → 1.17d |  |
| 124 | Deploy To Production | 2018-12-12 09:34 → 2018-12-13 15:36 (+1d) | 2018-12-13 09:34 → 2018-12-14 15:36 (+1d) |  | 2.8d → 1.17d |  |
| 125 | Acceptance Criteria Buffer | 2018-12-13 09:34 → 2018-12-14 15:36 (+1d) | 2018-12-14 09:34 → 2018-12-17 15:36 (+3d) |  | 51.75d → 50.12d |  |
| 126 | Project Wrap up | 2018-12-14 09:34 → 2018-12-17 15:36 (+3d) | 2019-01-04 09:59 → 2019-01-07 16:02 (+3d) |  | 51.75d → 50.12d |  |

## Version 4 (saved 2018-11-04)

Note of the change: With no over allocation

Last finish stays 2019-03-18.

Changed:

| ID | Task | Start | Finish | Duration | Total float | Other |
| --- | --- | --- | --- | --- | --- | --- |
| 46 | Kickoff Meeting |  | 2018-06-08 12:00 → 2018-06-08 09:36 | 0.5d → 0.2d | 193.5d → 193.8d |  |
| 53 | Create Operational Requirements |  | 2018-06-12 17:00 → 2018-06-13 13:26 (+1d) | 5d → 5.56d | 5.67d → 5.12d | resources Ryan Neff (Functional Lead); Stacy Lyle (Functional Analyst); Rick Burke (Infrastructure Lead) → Ryan Neff (Functional Lead) [90%]; Stacy Lyle (Functional Analyst) [90%]; Rick Burke (Infrastructure Lead) [90%]; Marc Sanders (Development Lead) [90%] |
| 54 | Identify Technical Infrastructure Needs | 2018-06-13 08:00 → 2018-06-13 13:26 | 2018-06-14 17:00 → 2018-06-15 13:26 (+1d) |  | 20.04d → 19.48d |  |
| 55 | Document Requirements | 2018-07-19 08:00 → 2018-07-19 13:26 | 2018-09-07 10:38 → 2018-09-07 16:05 |  | 130.67d → 130.11d |  |
| 56 | Acceptance Criteria Buffer | 2018-07-17 08:00 → 2018-07-17 13:26 | 2018-07-18 17:00 → 2018-07-19 13:26 (+1d) |  | 130.67d → 130.11d |  |
| 89 | Create Development Environment | 2018-06-15 08:00 → 2018-06-15 13:26 | 2018-07-13 17:00 → 2018-07-16 13:26 (+3d) |  | 20.04d → 19.48d |  |
| 90 | Create Testing Environment | 2018-07-16 08:00 → 2018-07-16 13:26 | 2018-09-06 17:00 → 2018-09-07 13:26 (+1d) |  | 84.3d → 83.74d |  |
| 91 | Support Development Environment | 2018-07-16 08:00 → 2018-07-16 13:26 | 2018-09-06 17:00 → 2018-09-07 13:26 (+1d) |  | 130.5d → 129.94d |  |
| 92 | Support Testing Environment & Deployment | 2018-09-07 10:38 → 2018-09-07 16:05 | 2018-11-12 10:38 → 2018-11-12 16:05 |  | 84.17d → 83.61d |  |
| 94 | Security and Maintenance: Add web application and real-time backups | 2018-09-07 08:00 → 2018-09-07 13:26 | 2018-09-26 17:00 → 2018-09-27 13:26 (+1d) |  | 90.5d → 89.94d |  |
| 95 | Security and Maintenance: Data Loss Prevention Infrastructure | 2018-09-27 08:00 → 2018-09-27 13:26 | 2018-10-04 17:00 → 2018-10-05 13:26 (+1d) |  | 90.5d → 89.94d |  |
| 96 | Security and Maintenance: Setup Authentication | 2018-10-05 08:00 → 2018-10-05 13:26 | 2018-10-12 17:00 → 2018-10-15 13:26 (+3d) |  | 90.5d → 89.94d |  |
| 97 | Security and Maintenance: Threat Intelligence | 2018-10-15 08:00 → 2018-10-15 13:26 | 2018-10-22 17:00 → 2018-10-23 13:26 (+1d) |  | 90.5d → 89.94d |  |
| 98 | Security and Maintenance: Identity and Access Management | 2018-10-23 08:00 → 2018-10-23 13:26 | 2018-10-31 17:00 → 2018-11-01 13:26 (+1d) |  | 90.5d → 89.94d |  |
| 99 | Document Technical infrastructure details | 2018-11-12 10:38 → 2018-11-12 16:05 | 2018-11-12 15:38 → 2018-11-13 11:05 (+1d) |  | 84.17d → 83.61d |  |
| 100 | Acceptance Criteria Buffer | 2018-11-01 08:00 → 2018-11-01 13:26 | 2018-11-01 17:00 → 2018-11-02 13:26 (+1d) |  | 90.5d → 89.94d |  |

## Version 5 (saved 2018-11-04)

Note of the change: I removed multiple milestones

Last finish stays 2019-03-18.

Removed: 4 Manage Communication

Changed:

| ID | Task | Start | Finish | Duration | Total float | Other |
| --- | --- | --- | --- | --- | --- | --- |
| 3 | Manage Project | 2018-06-08 08:00 → 2018-05-30 08:00 (-9d) | 2019-02-01 08:48 → 2019-02-18 08:53 (+17d) | 162.1d → 180.11d | 0d → 20.89d | resources Chris Johnson (Project Manager) [50%] → Chris Johnson (Project Manager) [45%] |
