# INST706_Project_Step1

How a schedule from MS Project changed from version to version. A marks actual dates.

## Version 1 (saved 2018-10-04)

Note of the change: Project Main File

| ID | WBS | Task | Duration | Start | Finish | Predecessors | Total float |
| --- | --- | --- | --- | --- | --- | --- | --- |
| 1 | 1 | **Overall Project** | 139d | 2018-05-29 | 2018-12-07 |  |  |
| 2 | 1.1 | **Project Management** | 137d | 2018-05-30 | 2018-12-07 |  | 0.72d |
| 3 |  | Manage Project | 137d | 2018-05-30 | 2018-12-07 | 69FF | 0.72d |
| 4 |  | Document project progress | 137d | 2018-05-30 | 2018-12-07 | 69FF | 0.72d |
| 5 | 1.2 | **System Requirements** | 13.33d | 2018-05-29 | 2018-06-15 |  |  |
| 6 |  | Gather Business Requirements | 4d | 2018-05-29 | 2018-06-01 |  | 2.72d |
| 7 |  | Design Business Process Flows | 2d | 2018-06-04 | 2018-06-05 | 6 | 2.72d |
| 8 |  | Document Business Process Flows | 0.5d | 2018-06-06 | 2018-06-06 | 7 | 132.5d |
| 9 |  | Finalize Technical Requirements | 6d | 2018-05-29 | 2018-06-05 |  | 19.09d |
| 10 |  | Create Operational Requirements | 5d | 2018-06-06 | 2018-06-12 | 6, 7 | 2.72d |
| 11 |  | Identify Technical Infrastructure Needs | 2d | 2018-06-13 | 2018-06-14 | 9, 10 | 14.09d |
| 12 |  | Document Requirements | 0.33d | 2018-06-15 | 2018-06-15 | 6, 9, 10, 11 | 125.67d |
| 13 | 1.3 | **Software Requirements** | 20.5d | 2018-06-15 | 2018-07-13 |  |  |
| 14 | 1.3.1 | **Create Functional Requirements** | 20.5d | 2018-06-15 | 2018-07-13 | 6, 7, 10 |  |
| 15 |  | Capture Customer Profile | 4d | 2018-06-15 | 2018-06-20 |  | 5.72d |
| 16 |  | View and Search Product Catalog | 6d | 2018-06-15 | 2018-06-22 |  | 0.72d |
| 17 |  | Updating and Calculating Shopping Cart | 3d | 2018-06-25 | 2018-06-27 | 16 | 0.72d |
| 18 |  | Taking Payments | 6d | 2018-06-15 | 2018-06-22 |  | 3.72d |
| 19 |  | Submit Order | 8d | 2018-06-28 | 2018-07-09 | 15, 16, 17, 18 | 0.72d |
| 20 |  | Check Order History & Order Status | 3d | 2018-07-10 | 2018-07-12 | 19 | 0.72d |
| 21 |  | Document Functional requirements | 0.5d | 2018-07-13 | 2018-07-13 | 15, 16, 17, 18, 19, 20 | 0.72d |
| 22 |  | Create Data Requirements | 3d | 2018-06-25 | 2018-06-27 | 15, 16 | 11.22d |
| 23 |  | Create ERP Interface Requirements | 7d | 2018-06-28 | 2018-07-06 | 19SS | 4.22d |
| 24 |  | Create User Interface Requirements | 4d | 2018-06-25 | 2018-06-28 | 14SS | 10.22d |
| 25 |  | Document Data, ERP Interface and User Interface Requiremnts | 1d | 2018-07-09 | 2018-07-09 | 22, 23, 24 | 4.22d |
| 26 | 1.4 | **Detailed Design** | 27.2d | 2018-07-13 | 2018-08-21 | 13 | 0.72d |
| 27 |  | Design Capture Customer Profile Pages & Components | 9d | 2018-07-13 | 2018-07-26 |  | 3.72d |
| 28 |  | Design View and Search Product Catalog Pages & Components | 9d | 2018-07-13 | 2018-07-26 |  | 0.72d |
| 29 |  | Design Updating and Calculating Shopping Cart | 3d | 2018-07-26 | 2018-07-31 | 28 | 0.72d |
| 30 |  | Design Taking Payments Pages & Components | 6d | 2018-07-13 | 2018-07-31 |  | 0.72d |
| 31 |  | Design Submit Order Pages & Components | 8d | 2018-07-31 | 2018-08-10 | 27, 28, 29, 30 | 5.72d |
| 32 |  | Design check Order History & Order Status Pages & Components | 2d | 2018-08-10 | 2018-08-14 | 31 | 5.72d |
| 33 |  | Design Logical & Physical Data Model | 12d | 2018-07-13 | 2018-07-31 |  | 4.59d |
| 34 |  | Design ERP Interface | 15d | 2018-07-31 | 2018-08-21 | 27, 28, 29, 30 | 0.72d |
| 35 |  | Document the design of all modules | 0.2d | 2018-08-21 | 2018-08-21 | 27, 28, 29, 30, 31, 32, 33, 34 | 0.72d |
| 36 | 1.5 | **Test Planning** | 51.87d | 2018-07-13 | 2018-09-25 |  | 0.72d |
| 37 |  | Gather Testing Requirements | 7d | 2018-07-13 | 2018-07-24 | 14 | 20.92d |
| 38 |  | Create System Test Plan & Test Cases | 10d | 2018-08-21 | 2018-09-04 | 37, 26 | 0.72d |
| 39 |  | Write System Test Scripts | 14.67d | 2018-09-04 | 2018-09-25 | 38 | 0.72d |
| 40 | 1.6 | **Technical Infrastructure** | 110d | 2018-06-15 | 2018-11-15 |  | 14.09d |
| 41 |  | Create Development Environment | 20d | 2018-06-15 | 2018-07-12 | 11 | 14.09d |
| 42 |  | Create Testing Environment | 38d | 2018-07-13 | 2018-09-04 | 41 | 21.5d |
| 43 |  | Support Development Environment | 38d | 2018-07-13 | 2018-09-04 | 41 | 67.5d |
| 44 |  | Support Testing Environment & Deployment | 46d | 2018-09-05 | 2018-11-07 | 42 | 21.5d |
| 45 |  | Support Database | 46d | 2018-09-12 | 2018-11-15 | 55 | 16d |
| 46 |  | Document Technical infrastructure details | 0.5d | 2018-11-15 | 2018-11-15 | 41, 42, 43, 44, 45 | 16d |
| 47 | 1.7 | **Development & Unit Test** | 45.16d | 2018-07-26 | 2018-09-27 | 41 | 4.59d |
| 48 |  | Train developers | 3d | 2018-07-26 | 2018-07-31 | 27 | 4.59d |
| 49 |  | Build Capture Customer Profile Pages & Components | 13d | 2018-07-31 | 2018-08-27 | 27, 48 | 4.59d |
| 50 |  | Build View and Search Product Catalog Pages & Components | 12d | 2018-07-31 | 2018-08-16 | 28, 48 | 4.59d |
| 51 |  | Build Updating and Calculating Shopping Cart | 7d | 2018-08-16 | 2018-08-27 | 29, 50, 48 | 4.59d |
| 52 |  | Build Taking Payments Pages & Components | 6d | 2018-07-31 | 2018-08-08 | 30, 48 | 17.59d |
| 53 |  | Build Submit Order Pages & Components | 12d | 2018-08-27 | 2018-09-12 | 31, 49, 50, 51, 52, 48 | 4.59d |
| 54 |  | Build Check Order History & Order Status Pages & Components | 6d | 2018-08-14 | 2018-08-22 | 32, 48 | 19.59d |
| 55 |  | Build Logical & Physical Data Model | 31d | 2018-07-31 | 2018-09-12 | 33, 48 | 4.59d |
| 56 |  | Build ERP Interface | 18d | 2018-08-21 | 2018-09-14 | 34, 48 | 2.59d |
| 57 |  | Support Development & Assembly Test | 26.67d | 2018-08-21 | 2018-09-27 | 26, 48 | 51.34d |
| 58 |  | Document development work and best practices | 0.29d | 2018-09-27 | 2018-09-27 | 49, 50, 51, 52, 53, 54, 55, 56, 57 | 51.34d |
| 59 | 1.8 | **Testing** | 51.2d | 2018-08-27 | 2018-11-06 |  | 0.72d |
| 60 | 1.8.1 | **Perform Assembly Testing** | 19d | 2018-08-27 | 2018-09-21 | 37 | 2.59d |
| 61 |  | Perform Phase 1 Testing | 12d | 2018-08-27 | 2018-09-12 | 49, 50, 51 | 4.59d |
| 62 |  | Perform Phase 2 Testing | 5d | 2018-09-14 | 2018-09-21 | 52, 53, 54, 61, 55, 56 | 2.59d |
| 63 |  | Perform System Testing | 20d | 2018-09-25 | 2018-10-23 | 60, 38, 39 | 0.72d |
| 64 |  | Perform Validation Testing | 10d | 2018-10-23 | 2018-11-06 | 63 | 0.72d |
| 65 |  | Document tests and test results | 0.33d | 2018-11-06 | 2018-11-06 | 60, 63, 64 | 0.72d |
| 66 | 1.9 | **Deployment** | 22.58d | 2018-11-06 | 2018-12-07 | 59 | 0.72d |
| 67 |  | Implement System | 10d | 2018-11-06 | 2018-11-20 |  | 0.72d |
| 68 |  | Deploy To Production | 1d | 2018-11-20 | 2018-11-21 | 67 | 0.72d |
| 69 |  | Project Wrap up | 11.58d | 2018-11-21 | 2018-12-07 | 68 | 0.72d |

## Version 2 (saved 2018-10-29)

Note of the change: more resources, calendar works

Last finish 2018-12-07 → 2018-12-12 (+5d).

Changed:

| ID | Task | Start | Finish | Duration | Total float |
| --- | --- | --- | --- | --- | --- |
| 1 | **Overall Project** |  |  | 139d → 135d |  |
| 2 | **Project Management** | 2018-05-30 → 2018-05-29 (-1d) | 2018-12-07 → 2018-12-11 (+4d) |  | 0.72d → 0.28d |
| 3 | Manage Project | 2018-05-30 → 2018-05-29 (-1d) | 2018-12-07 → 2018-12-11 (+4d) |  | 0.72d → 0.28d |
| 4 | Document project progress | 2018-05-30 → 2018-05-29 (-1d) | 2018-12-07 → 2018-12-11 (+4d) |  | 0.72d → 0.28d |
| 13 | **Software Requirements** |  |  | 20.5d → 19.5d |  |
| 14 | **Create Functional Requirements** |  |  | 20.5d → 19.5d |  |
| 19 | Submit Order |  | 2018-07-09 → 2018-07-10 (+1d) |  | 0.72d → -1d |
| 20 | Check Order History & Order Status | 2018-07-10 → 2018-07-11 (+1d) | 2018-07-12 → 2018-07-13 (+1d) |  | 0.72d → -1d |
| 21 | Document Functional requirements | 2018-07-13 → 2018-07-16 (+3d) | 2018-07-13 → 2018-07-16 (+3d) |  | 0.72d → -1d |
| 23 | Create ERP Interface Requirements |  | 2018-07-06 → 2018-07-09 (+3d) |  | 4.22d → 2.5d |
| 25 | Document Data, ERP Interface and User Interface Requiremnts | 2018-07-09 → 2018-07-10 (+1d) | 2018-07-09 → 2018-07-10 (+1d) |  | 4.22d → 2.5d |
| 36 | **Test Planning** |  | 2018-09-25 → 2018-09-26 (+1d) |  | 0.72d → 0d |
| 38 | Create System Test Plan & Test Cases |  | 2018-09-04 → 2018-09-05 (+1d) |  | 0.72d → 0d |
| 39 | Write System Test Scripts | 2018-09-04 → 2018-09-05 (+1d) | 2018-09-25 → 2018-09-26 (+1d) |  | 0.72d → 0d |
| 40 | **Technical Infrastructure** |  | 2018-11-15 → 2018-11-16 (+1d) | 110d → 109d | 14.09d → 12.37d |
| 41 | Create Development Environment |  | 2018-07-12 → 2018-07-13 (+1d) |  | 14.09d → 12.37d |
| 42 | Create Testing Environment | 2018-07-13 → 2018-07-16 (+3d) | 2018-09-04 → 2018-09-06 (+2d) |  | 21.5d → 19.78d |
| 43 | Support Development Environment | 2018-07-13 → 2018-07-16 (+3d) | 2018-09-04 → 2018-09-06 (+2d) |  | 67.5d → 65.78d |
| 44 | Support Testing Environment & Deployment | 2018-09-05 → 2018-09-07 (+2d) | 2018-11-07 → 2018-11-09 (+2d) |  | 21.5d → 19.78d |
| 45 | Support Database | 2018-09-12 → 2018-09-13 (+1d) | 2018-11-15 → 2018-11-16 (+1d) |  | 16d → 15.28d |
| 46 | Document Technical infrastructure details | 2018-11-15 → 2018-11-16 (+1d) | 2018-11-15 → 2018-11-16 (+1d) |  | 16d → 15.28d |
| 47 | **Development & Unit Test** |  | 2018-09-27 → 2018-09-28 (+1d) |  | 4.59d → 3.87d |
| 53 | Build Submit Order Pages & Components |  | 2018-09-12 → 2018-09-13 (+1d) |  | 4.59d → 3.87d |
| 55 | Build Logical & Physical Data Model |  | 2018-09-12 → 2018-09-13 (+1d) |  | 4.59d → 3.87d |
| 56 | Build ERP Interface |  | 2018-09-14 → 2018-09-17 (+3d) |  | 2.59d → 1.87d |
| 57 | Support Development & Assembly Test |  | 2018-09-27 → 2018-09-28 (+1d) |  | 51.34d → 50.62d |
| 58 | Document development work and best practices | 2018-09-27 → 2018-09-28 (+1d) | 2018-09-27 → 2018-09-28 (+1d) |  | 51.34d → 50.62d |
| 59 | **Testing** |  | 2018-11-06 → 2018-11-07 (+1d) |  | 0.72d → 0d |
| 60 | **Perform Assembly Testing** |  | 2018-09-21 → 2018-09-24 (+3d) |  | 2.59d → 1.87d |
| 61 | Perform Phase 1 Testing |  | 2018-09-12 → 2018-09-13 (+1d) |  | 4.59d → 3.87d |
| 62 | Perform Phase 2 Testing | 2018-09-14 → 2018-09-17 (+3d) | 2018-09-21 → 2018-09-24 (+3d) |  | 2.59d → 1.87d |
| 63 | Perform System Testing | 2018-09-25 → 2018-09-26 (+1d) | 2018-10-23 → 2018-10-24 (+1d) |  | 0.72d → 0d |
| 64 | Perform Validation Testing | 2018-10-23 → 2018-10-24 (+1d) | 2018-11-06 → 2018-11-07 (+1d) |  | 0.72d → 0d |
| 65 | Document tests and test results | 2018-11-06 → 2018-11-07 (+1d) | 2018-11-06 → 2018-11-07 (+1d) |  | 0.72d → 0d |
| 66 | **Deployment** | 2018-11-06 → 2018-11-07 (+1d) | 2018-12-07 → 2018-12-12 (+5d) |  | 0.72d → 0d |
| 67 | Implement System | 2018-11-06 → 2018-11-07 (+1d) | 2018-11-20 → 2018-11-21 (+1d) |  | 0.72d → 0d |
| 68 | Deploy To Production | 2018-11-20 → 2018-11-21 (+1d) | 2018-11-21 → 2018-11-26 (+5d) |  | 0.72d → 0d |
| 69 | Project Wrap up | 2018-11-21 → 2018-11-26 (+5d) | 2018-12-07 → 2018-12-12 (+5d) |  | 0.72d → 0d |

## Version 3 (saved 2018-11-02)

Note of the change: Added Installation Maintenance and Support

Last finish 2018-12-12 → 2019-02-22 (+72d).

Added:

| ID | Task | Duration | Start | Finish | Predecessors | Resources |
| --- | --- | --- | --- | --- | --- | --- |
| 70 | **Post-Installation Maintenance and Support** | 60d | 2018-11-26 | 2019-02-22 | 68 |  |
| 71 | Maintenance Post-Installation | 60d | 2018-11-26 | 2019-02-22 |  | Sanjay Vohra (DBA); ERP Expert 1 |
| 72 | Support Post-Installation | 60d | 2018-11-26 | 2019-02-22 | 71FF | ERP Expert 2; Developer 5 |
